# 喷砂油漆 Sandblasting and painting work

Schedule from a web Gantt chart, 2026-04-06 to 2026-05-17.
Every day is a working day

## Schedule

| ID | WBS | Task | Duration | Start | Finish | Predecessors | Complete | inPeople | Status |
| --- | --- | --- | --- | --- | --- | --- | --- | --- | --- |
| 2 | 1 | **BOX18、19** | 12d | 2026-04-06 | 2026-04-17 |  | 11% |  |  |
| 3 | 1.1 | 初喷 Initial sandblasting | 1d | 2026-04-06 | 2026-04-06 |  | 100% | 王乃强 | done |
| 4 | 1.2 | 返修 Defect repair process | 4d | 2026-04-07 | 2026-04-10 | 3 | 60% | 李元明 |  |
| 5 | 1.3 | 复喷 Second sandblasting process | 1d | 2026-04-11 | 2026-04-11 | 4 |  | 王乃强 | waiting |
| 6 | 1.4 | 底漆-1号 Priming coat - Room 1 of Paint Warehouse | 2d | 2026-04-12 | 2026-04-13 | 5 |  | 王乃强 | waiting |
| 7 | 1.5 | 中间漆-1号 Intermediate coat- Room 1 of Paint Warehouse | 2d | 2026-04-14 | 2026-04-15 | 6 |  | 王乃强 | waiting |
| 8 | 1.6 | 面漆-1号 Final coat- Room 1 of Paint Warehouse | 2d | 2026-04-16 | 2026-04-17 | 7 |  | 王乃强 | waiting |
| 9 | 2 | **BOX20、21** | 15d | 2026-04-07 | 2026-04-21 |  |  |  | waiting |
| 10 | 2.1 | 初喷 Initial sandblasting | 1d | 2026-04-07 | 2026-04-07 | 3 |  | 王乃强 | waiting |
| 11 | 2.2 | 返修 Defect repair proces | 4d | 2026-04-11 | 2026-04-14 | 4 |  | 李元明 | waiting |
| 12 | 2.3 | 复喷 Second sandblasting process | 1d | 2026-04-15 | 2026-04-15 | 11 |  | 王乃强 | waiting |
| 13 | 2.4 | 底漆-2号 Priming coat - Room 2 of Paint Warehouse | 2d | 2026-04-16 | 2026-04-17 | 12 |  | 王乃强 | waiting |
| 14 | 2.5 | 中间漆-2号 Intermediate coat- Room 2 of Paint Warehouse | 2d | 2026-04-18 | 2026-04-19 | 13 |  | 王乃强 | waiting |
| 15 | 2.6 | 面漆-2号 Final coat- Room 2 of Paint Warehouse | 2d | 2026-04-20 | 2026-04-21 | 14 |  | 王乃强 | waiting |
| 16 | 3 | **BOX11、12** | 16d | 2026-04-08 | 2026-04-23 |  |  |  | waiting |
| 17 | 3.1 | 初喷 Initial sandblasting | 1d | 2026-04-08 | 2026-04-08 | 10 |  | 王乃强 | waiting |
| 18 | 3.2 | 返修 Defect repair proces | 2d | 2026-04-09 | 2026-04-10 | 17 |  | 李元明 | waiting |
| 19 | 3.3 | 复喷 Second sandblasting process | 1d | 2026-04-11 | 2026-04-11 | 18 |  | 王乃强 | waiting |
| 20 | 3.4 | 底漆-1号 Priming coat - Room 1 of Paint Warehouse | 2d | 2026-04-18 | 2026-04-19 | 19, 8 |  | 王乃强 | waiting |
| 21 | 3.5 | 中间漆-1号 Intermediate coat- Room 1 of Paint Warehouse | 2d | 2026-04-20 | 2026-04-21 | 20 |  | 王乃强 | waiting |
| 22 | 3.6 | 面漆-1号 Final coat- Room 1 of Paint Warehouse | 2d | 2026-04-22 | 2026-04-23 | 21 |  | 王乃强 | waiting |
| 23 | 4 | **BOX6、7** | 19d | 2026-04-09 | 2026-04-27 |  |  |  | waiting |
| 24 | 4.1 | 初喷 Initial sandblasting | 1d | 2026-04-09 | 2026-04-09 | 17 |  | 王乃强 | waiting |
| 25 | 4.2 | 返修 Defect repair proces | 2d | 2026-04-11 | 2026-04-12 | 24, 18 |  | 李元明 | waiting |
| 26 | 4.3 | 复喷 Second sandblasting process | 1d | 2026-04-13 | 2026-04-13 | 25 |  | 王乃强 | waiting |
| 27 | 4.4 | 底漆-2号 Priming coat - Room 2 of Paint Warehouse | 2d | 2026-04-22 | 2026-04-23 | 26, 15 |  | 王乃强 | waiting |
| 28 | 4.5 | 中间漆-2号 Intermediate coat- Room 2 of Paint Warehouse | 2d | 2026-04-24 | 2026-04-25 | 27 |  | 王乃强 | waiting |
| 29 | 4.6 | 面漆-2号 Final coat- Room 2 of Paint Warehouse | 2d | 2026-04-26 | 2026-04-27 | 28 |  | 王乃强 | waiting |

| ID | WBS | Task | Duration | Start | Finish | Predecessors | Status | inPeople |
| --- | --- | --- | --- | --- | --- | --- | --- | --- |
| 30 | 5 | **BOX8、10** | 20d | 2026-04-10 | 2026-04-29 |  | waiting |  |
| 31 | 5.1 | 初喷 Initial sandblasting | 1d | 2026-04-10 | 2026-04-10 | 24 | waiting | 王乃强 |
| 32 | 5.2 | 返修 Defect repair proces | 2d | 2026-04-13 | 2026-04-14 | 31, 25 | waiting | 李元明 |
| 33 | 5.3 | 复喷 Second sandblasting process | 1d | 2026-04-15 | 2026-04-15 | 32 | waiting | 王乃强 |
| 34 | 5.4 | 底漆-1号 Priming coat - Room 1 of Paint Warehouse | 2d | 2026-04-24 | 2026-04-25 | 33, 22 | waiting | 王乃强 |
| 35 | 5.5 | 中间漆-1号 Intermediate coat- Room 1 of Paint Warehouse | 2d | 2026-04-26 | 2026-04-27 | 34 | waiting | 王乃强 |
| 36 | 5.6 | 面漆-1号 Final coat- Room 1 of Paint Warehouse | 2d | 2026-04-28 | 2026-04-29 | 35 | waiting | 王乃强 |
| 37 | 6 | **BOX14、1** | 23d | 2026-04-11 | 2026-05-03 |  | waiting |  |
| 38 | 6.1 | 初喷 Initial sandblasting | 1d | 2026-04-11 | 2026-04-11 | 31 | waiting | 王乃强 |
| 39 | 6.2 | 返修 Defect repair proces | 2d | 2026-04-15 | 2026-04-16 | 38, 32 | waiting | 李元明 |
| 40 | 6.3 | 复喷 Second sandblasting process | 1d | 2026-04-17 | 2026-04-17 | 39 | waiting | 王乃强 |
| 41 | 6.4 | 底漆-2号 Priming coat - Room 2 of Paint Warehouse | 2d | 2026-04-28 | 2026-04-29 | 40, 29 | waiting | 王乃强 |
| 42 | 6.5 | 中间漆-2号 Intermediate coat- Room 2 of Paint Warehouse | 2d | 2026-04-30 | 2026-05-01 | 41 | waiting | 王乃强 |
| 43 | 6.6 | 面漆-2号 Final coat- Room 2 of Paint Warehouse | 2d | 2026-05-02 | 2026-05-03 | 42 | waiting | 王乃强 |
| 44 | 7 | **BOX2、3** | 24d | 2026-04-12 | 2026-05-05 |  | waiting |  |
| 45 | 7.1 | 初喷 Initial sandblasting | 1d | 2026-04-12 | 2026-04-12 | 38 | waiting | 王乃强 |
| 46 | 7.2 | 返修 Defect repair proces | 2d | 2026-04-17 | 2026-04-18 | 45, 39 | waiting | 李元明 |
| 47 | 7.3 | 复喷 Second sandblasting process | 1d | 2026-04-19 | 2026-04-19 | 46 | waiting | 王乃强 |
| 48 | 7.4 | 底漆-1号 Priming coat - Room 1 of Paint Warehouse | 2d | 2026-04-30 | 2026-05-01 | 47, 36 | waiting | 王乃强 |
| 49 | 7.5 | 中间漆-1号 Intermediate coat- Room 1 of Paint Warehouse | 2d | 2026-05-02 | 2026-05-03 | 48 | waiting | 王乃强 |
| 50 | 7.6 | 面漆-1号 Final coat- Room 1 of Paint Warehouse | 2d | 2026-05-04 | 2026-05-05 | 49 | waiting | 王乃强 |
| 51 | 8 | **BOX4、5** | 27d | 2026-04-13 | 2026-05-09 |  | waiting |  |
| 52 | 8.1 | 初喷 Initial sandblasting | 1d | 2026-04-13 | 2026-04-13 | 45 | waiting | 王乃强 |
| 53 | 8.2 | 返修 Defect repair proces | 2d | 2026-04-19 | 2026-04-20 | 52, 46 | waiting | 李元明 |
| 54 | 8.3 | 复喷 Second sandblasting process | 1d | 2026-04-21 | 2026-04-21 | 53 | waiting | 王乃强 |
| 55 | 8.4 | 底漆-2号 Priming coat - Room 2 of Paint Warehouse | 2d | 2026-05-04 | 2026-05-05 | 54, 43 | waiting | 王乃强 |
| 56 | 8.5 | 中间漆-2号 Intermediate coat- Room 2 of Paint Warehouse | 2d | 2026-05-06 | 2026-05-07 | 55 | waiting | 王乃强 |
| 57 | 8.6 | 面漆-2号 Final coat- Room 2 of Paint Warehouse | 2d | 2026-05-08 | 2026-05-09 | 56 | waiting | 王乃强 |

| ID | WBS | Task | Duration | Start | Finish | Predecessors | Status | inPeople |
| --- | --- | --- | --- | --- | --- | --- | --- | --- |
| 58 | 9 | **BOX13、15** | 28d | 2026-04-14 | 2026-05-11 |  | waiting |  |
| 59 | 9.1 | 初喷 Initial sandblasting | 1d | 2026-04-14 | 2026-04-14 | 52 | waiting | 王乃强 |
| 60 | 9.2 | 返修 Defect repair proces | 2d | 2026-04-21 | 2026-04-22 | 59, 53 | waiting | 李元明 |
| 61 | 9.3 | 复喷 Second sandblasting process | 1d | 2026-04-23 | 2026-04-23 | 60 | waiting | 王乃强 |
| 62 | 9.4 | 底漆-1号 Priming coat - Room 1 of Paint Warehouse | 2d | 2026-05-06 | 2026-05-07 | 61, 50 | waiting | 王乃强 |
| 63 | 9.5 | 中间漆-1号 Intermediate coat- Room 1 of Paint Warehouse | 2d | 2026-05-08 | 2026-05-09 | 62 | waiting | 王乃强 |
| 64 | 9.6 | 面漆-1号 Final coat- Room 1 of Paint Warehouse | 2d | 2026-05-10 | 2026-05-11 | 63 | waiting | 王乃强 |
| 65 | 10 | **BOX16、17** | 31d | 2026-04-15 | 2026-05-15 |  | waiting |  |
| 66 | 10.1 | 初喷 Initial sandblasting | 1d | 2026-04-15 | 2026-04-15 | 59 | waiting | 王乃强 |
| 67 | 10.2 | 返修 Defect repair proces | 2d | 2026-04-23 | 2026-04-24 | 66, 60 | waiting | 李元明 |
| 68 | 10.3 | 复喷 Second sandblasting process | 1d | 2026-04-25 | 2026-04-25 | 67 | waiting | 王乃强 |
| 69 | 10.4 | 底漆-2号 Priming coat - Room 2 of Paint Warehouse | 2d | 2026-05-10 | 2026-05-11 | 68, 57 | waiting | 王乃强 |
| 70 | 10.5 | 中间漆-2号 Intermediate coat- Room 2 of Paint Warehouse | 2d | 2026-05-12 | 2026-05-13 | 69 | waiting | 王乃强 |
| 71 | 10.6 | 面漆-2号 | 2d | 2026-05-14 | 2026-05-15 | 70 | waiting | 王乃强 |
| 72 | 11 | **BOX9** | 32d | 2026-04-16 | 2026-05-17 |  | waiting |  |
| 73 | 11.1 | 初喷 Initial sandblasting | 1d | 2026-04-16 | 2026-04-16 | 66 | waiting | 王乃强 |
| 74 | 11.2 | 返修 Defect repair proces | 2d | 2026-04-25 | 2026-04-26 | 73, 67 | waiting | 李元明 |
| 75 | 11.3 | 复喷 Second sandblasting process | 1d | 2026-04-27 | 2026-04-27 | 74 | waiting | 王乃强 |
| 76 | 11.4 | 底漆-1号 Priming coat - Room 1 of Paint Warehouse | 2d | 2026-05-12 | 2026-05-13 | 75, 64 | waiting | 王乃强 |
| 77 | 11.5 | 中间漆-1号 Intermediate coat- Room 1 of Paint Warehouse | 2d | 2026-05-14 | 2026-05-15 | 76 | waiting | 王乃强 |
| 78 | 11.6 | 面漆-1号 Final coat- Room 1 of Paint Warehous | 2d | 2026-05-16 | 2026-05-17 | 77 | waiting | 王乃强 |
